# Projektni plan-SLunjski

Schedule from MS Project, 2013-04-18 to 2013-06-27, costs in kn, A marks actual dates.

## Calendars

- Standard: Mon-Fri 08:00-12:00, 13:00-17:00; Sat-Sun off.

## Resources

| Resource | Rate |
| --- | --- |
| Slunjski Deni | 30 |
| Karlo Batrla | 30 |
| Luka Banožić | 30 |
| Igor Kežman | 30 |
| Matija Domjan | 30 |

## Schedule

| ID | WBS | Task | Type | Duration | Start | Finish | Predecessors | Complete | Remaining | Deadline | Resources | Work | Actual work | Cost | Actual cost |
| --- | --- | --- | --- | --- | --- | --- | --- | --- | --- | --- | --- | --- | --- | --- | --- |
| 1 | 1 | **Projekt AppGrade** |  | 50d | 2013-04-18 A | 2013-06-26 |  | 99% | 0d |  |  | 1456h | 1456h | 43,680 | 43,680 |
| 2 | 1.1 | Početak projekta | milestone, manual | 0d | 2013-04-18 A | 2013-04-18 A |  | 100% |  |  |  |  |  |  |  |
| 3 | 1.2 | **Prva faza** |  | 23d | 2013-04-18 A | 2013-05-19 A | 2 | 100% |  | 2013-05-19 |  | 344h | 344h | 10,320 | 10,320 |
| 4 | 1.2.1 | Izrada projektnog plana I ponude | manual | 5d | 2013-04-18 A | 2013-04-24 A | 2 | 100% |  |  | Slunjski Deni | 40h | 40h | 1,200 | 1,200 |
| 5 | 1.2.2 | Izrada dijagrama slučajeva | manual | 2d | 2013-04-29 A | 2013-04-30 A | 4 | 100% |  |  | Matija Domjan; Slunjski Deni | 24h | 24h | 720 | 720 |
| 6 | 1.2.3 | Izrada dijagrama slijeda, aktivnosti I klasa | manual | 4d | 2013-05-01 A | 2013-05-06 A | 5 | 100% |  |  | Matija Domjan; Karlo Batrla | 64h | 64h | 1,920 | 1,920 |
| 7 | 1.2.4 | Opis dijagrama u word dokumentu | manual | 4d | 2013-05-07 A | 2013-05-10 A | 6 | 100% |  |  | Slunjski Deni | 32h | 32h | 960 | 960 |
| 8 | 1.2.5 | Izrada era modela | manual | 7d | 2013-05-07 A | 2013-05-15 A | 6 | 100% |  |  | Igor Kežman; Luka Banožić | 112h | 112h | 3,360 | 3,360 |
| 9 | 1.2.6 | Izrada kostura aplikacije | manual | 3d | 2013-05-16 A | 2013-05-19 A | 8 | 100% |  |  | Igor Kežman; Luka Banožić | 48h | 48h | 1,440 | 1,440 |
| 10 | 1.2.7 | Dorada word dokumenta | manual | 3d | 2013-05-16 A | 2013-05-18 A | 8 | 100% |  | 2013-05-19 | Slunjski Deni | 24h | 24h | 720 | 720 |
| 11 | 1.2.8 | Kraj prve faze | milestone, manual | 0d | 2013-05-19 A | 2013-05-19 A | 10 | 100% |  | 2013-05-19 |  |  |  |  |  |
| 12 | 1.3 | **Druga faza** |  | 27d | 2013-05-20 A | 2013-06-26 A | 3 | 100% |  |  |  | 1112h | 1112h | 33,360 | 33,360 |
| 13 | 1.3.1 | Početak druge faze | milestone, manual | 0d | 2013-05-20 A | 2013-05-20 A | 11 | 100% |  |  |  |  |  |  |  |
| 14 | 1.3.2 | Dorada aplikacije | manual | 12d | 2013-05-20 A | 2013-06-04 A | 13 | 100% |  |  | Igor Kežman; Karlo Batrla; Luka Banožić; Matija Domjan; Slunjski Deni | 480h | 480h | 14,400 | 14,400 |
| 15 | 1.3.3 | Dogovor oko daljenjeg razvoja | manual | 2d | 2013-06-05 A | 2013-06-06 A | 14 | 100% |  |  | Igor Kežman; Karlo Batrla; Luka Banožić; Matija Domjan; Slunjski Deni | 80h | 80h | 2,400 | 2,400 |
| 16 | 1.3.4 | Dorada aplikacije 2 | manual | 4d | 2013-06-07 A | 2013-06-12 A | 15 | 100% |  |  | Igor Kežman; Karlo Batrla; Luka Banožić; Matija Domjan; Slunjski Deni | 160h | 160h | 4,800 | 4,800 |
| 17 | 1.3.5 | Dogovor oko daljnjeg razvoja 2 | manual | 2d | 2013-06-13 A | 2013-06-14 A | 16 | 100% |  |  | Igor Kežman; Karlo Batrla; Luka Banožić; Matija Domjan; Slunjski Deni | 80h | 80h | 2,400 | 2,400 |
| 18 | 1.3.6 | Dorada aplikacije 3 | manual | 6d | 2013-06-17 A | 2013-06-24 A | 17 | 100% |  |  | Igor Kežman; Karlo Batrla; Luka Banožić; Matija Domjan; Slunjski Deni | 232h | 232h | 6,960 | 6,960 |
| 19 | 1.3.7 | Zavrsna faza-dogovor I detalji | manual | 2d | 2013-06-24 A | 2013-06-25 A | 18 | 100% |  | 2013-06-26 | Igor Kežman; Karlo Batrla; Luka Banožić; Matija Domjan; Slunjski Deni | 80h | 80h | 2,400 | 2,400 |
| 20 | 1.3.8 | Predaja projekta | milestone, manual | 0d | 2013-06-26 A | 2013-06-26 A | 19 | 100% |  |  |  |  |  |  |  |
| 21 | 1.4 | Kraj druge faze | milestone, manual | 0d | 2013-06-26 | 2013-06-26 | 12 |  |  |  |  |  |  |  |  |
| 22 | 2 | Kraj projekta | milestone, manual | 0d | 2013-06-27 | 2013-06-27 | 1 |  |  | 2013-06-26 |  |  |  |  |  |

Notes:
- 1: Početak projekta
- 10: Projekt je do ove faze napravljen i predan 19.52013 na moodle
- 19: Pregled aplikacije te što još treba dodati, na koji način još poboljšati
